# 微信

Schedule from MS Project, 2016-06-22 to 2016-07-08, A marks actual dates.

## Calendars

- 标准: Mon-Fri 08:00-12:00, 13:00-17:00; Sat-Sun off.

## Resources

| Resource |
| --- |
| 丁健勇 |
| 林智涛 |
| 邓国俊 |
| 赖丽华 |

## Schedule

| ID | WBS | Task | Duration | Start | Finish | Predecessors | Complete | Remaining | Total slack | Constraint | Resources | Work | Actual work |
| --- | --- | --- | --- | --- | --- | --- | --- | --- | --- | --- | --- | --- | --- |
| 1 | 1 | **后台管理** | 10d | 2016-06-22 08:00 A | 2016-07-05 17:00 |  | 35% | 6.5d |  |  |  | 80h | 28h |
| 2 | 1.1 | **配置管理** | 1d | 2016-06-22 08:00 A | 2016-06-22 17:00 A |  | 100% |  |  |  |  | 8h | 8h |
| 3 | 1.1.1 | 配置信息管理 | 0.25d | 2016-06-22 08:00 A | 2016-06-22 10:00 A |  | 100% |  |  | start no earlier than 2016-06-22 08:00 | 丁健勇 | 2h | 2h |
| 4 | 1.1.2 | 属性配置 | 0.25d | 2016-06-22 10:00 A | 2016-06-22 12:00 A | 3 | 100% |  |  |  | 丁健勇 | 2h | 2h |
| 5 | 1.1.3 | 公众号帐号管理 | 0.25d | 2016-06-22 13:00 A | 2016-06-22 15:00 A | 4 | 100% |  |  |  | 丁健勇 | 2h | 2h |
| 6 | 1.1.4 | token刷新 | 0.25d | 2016-06-22 15:00 A | 2016-06-22 17:00 A | 5 | 100% |  |  |  | 林智涛 | 2h | 2h |
| 7 | 1.2 | **用户管理** | 1d | 2016-06-28 08:00 | 2016-06-28 17:00 |  |  |  |  |  |  | 8h |  |
| 8 | 1.2.1 | 用户查询 | 0.5d | 2016-06-28 08:00 | 2016-06-28 12:00 | 34 |  |  | 0d | start no earlier than 2016-06-28 08:00 | 林智涛 | 4h |  |
| 9 | 1.2.2 | 用户详细信息 | 0.5d | 2016-06-28 13:00 | 2016-06-28 17:00 | 8 |  |  | 0d |  | 林智涛 | 4h |  |
| 10 | 1.3 | **素材管理** | 1.5d | 2016-06-28 08:00 | 2016-06-29 12:00 |  |  |  |  |  |  | 12h |  |
| 11 | 1.3.1 | 内容管理 | 1d | 2016-06-28 08:00 | 2016-06-28 17:00 |  |  |  | 0d | start no earlier than 2016-06-28 08:00 | 邓国俊 | 8h |  |
| 12 | 1.3.2 | 同步 | 0.5d | 2016-06-29 08:00 | 2016-06-29 12:00 | 11 |  |  | 0d |  | 邓国俊 | 4h |  |
| 13 | 1.4 | **消息下发** | 2d | 2016-06-22 08:00 | 2016-06-23 17:00 |  |  |  |  |  |  | 8h |  |
| 14 | 1.4.1 | 群发消息 | 0.5d | 2016-06-23 08:00 | 2016-06-23 12:00 | 6 |  |  | 0d | start no earlier than 2016-06-22 08:00 | 林智涛 | 4h |  |
| 15 | 1.4.2 | 单个下发 | 0.5d | 2016-06-23 13:00 | 2016-06-23 17:00 | 14 |  |  | 0d |  | 林智涛 | 4h |  |
| 16 | 1.5 | **模版消息** | 1d? | 2016-06-22 08:00 A | 2016-06-22 17:00 A |  | 100% |  |  |  |  | 8h | 8h |
| 17 | 1.5.1 | 对应关系管理 | 1d? | 2016-06-22 08:00 A | 2016-06-22 17:00 A |  | 100% |  |  | start no earlier than 2016-06-22 08:00 | 邓国俊 | 8h | 8h |
| 18 | 1.6 | **菜单管理** | 1.5d | 2016-06-23 08:00 A | 2016-06-24 12:00 A |  | 100% |  |  |  |  | 12h | 12h |
| 19 | 1.6.1 | 菜单资料管理 | 1d | 2016-06-23 08:00 A | 2016-06-23 17:00 A |  | 100% |  |  | start no earlier than 2016-06-23 08:00 | 邓国俊 | 8h | 8h |
| 20 | 1.6.2 | 菜单同步 | 0.5d | 2016-06-24 08:00 A | 2016-06-24 12:00 A | 19 | 100% |  |  |  | 邓国俊 | 4h | 4h |
| 21 | 1.7 | **上行消息** | 1d | 2016-06-30 08:00 | 2016-06-30 17:00 |  |  |  | 0d |  |  | 8h |  |
| 22 | 1.7.1 | 消息查询 | 0.5d | 2016-06-30 08:00 | 2016-06-30 12:00 |  |  |  | 0d | start no earlier than 2016-06-30 08:00 | 林智涛 | 4h |  |
| 23 | 1.7.2 | 消息详细 | 0.5d | 2016-06-30 13:00 | 2016-06-30 17:00 | 22 |  |  | 0d |  | 林智涛 | 4h |  |
| 24 | 1.8 | **事件推送** | 1d | 2016-06-29 08:00 | 2016-06-29 17:00 |  |  |  |  |  |  | 8h |  |
| 25 | 1.8.1 | 事件查询 | 0.5d | 2016-06-29 08:00 | 2016-06-29 12:00 |  |  |  | 0d | start no earlier than 2016-06-29 08:00 | 林智涛 | 4h |  |
| 26 | 1.8.2 | 事件详细 | 0.5d | 2016-06-29 13:00 | 2016-06-29 17:00 | 25 |  |  | 0d |  | 林智涛 | 4h |  |

| ID | WBS | Task | Type | Duration | Start | Finish | Predecessors | Complete | Remaining | Total slack | Free slack | Constraint | Resources | Work | Actual work |
| --- | --- | --- | --- | --- | --- | --- | --- | --- | --- | --- | --- | --- | --- | --- | --- |
| 27 | 1.9 | **二维码管理** |  | 1d | 2016-07-01 08:00 | 2016-07-01 17:00 |  |  |  |  |  |  |  | 8h |  |
| 28 | 1.9.1 | 二维码管理 | manual | 1d | 2016-07-01 08:00 | 2016-07-01 17:00 | 23 |  |  |  |  |  | 林智涛 | 8h |  |
| 29 | 2 | **服务端** |  | 2d | 2016-06-24 08:00 A | 2016-06-27 17:00 |  | 67% | 0.67d | 9d |  |  |  | 24h | 16h |
| 30 | 2.1 | **消息下行** |  | 1d | 2016-06-27 08:00 | 2016-06-27 17:00 |  |  |  | 9d |  |  |  | 8h |  |
| 31 | 2.1.1 | 消息推送 |  | 0.5d | 2016-06-27 08:00 | 2016-06-27 12:00 | 6 |  |  | 9d | 0d | start no earlier than 2016-06-27 08:00 | 林智涛 | 4h |  |
| 32 | 2.1.2 | 模版消息 |  | 0.5d | 2016-06-27 13:00 | 2016-06-27 17:00 | 31 |  |  | 9d |  |  | 林智涛 | 4h |  |
| 33 | 2.2 | **消息处理** |  | 2d | 2016-06-24 08:00 A | 2016-06-27 17:00 A |  | 100% |  |  |  |  |  | 16h | 16h |
| 34 | 2.2.1 | 消息接收 |  | 1d | 2016-06-24 08:00 A | 2016-06-24 17:00 A | 32 | 100% |  |  |  | start no earlier than 2016-06-24 08:00 | 丁健勇 | 8h | 8h |
| 35 | 2.2.2 | 事件推送接收 |  | 1d | 2016-06-27 08:00 A | 2016-06-27 17:00 A |  | 100% |  |  |  |  | 丁健勇 | 8h | 8h |
| 36 | 3 | **客户端联调** |  | 1d | 2016-07-04 08:00 | 2016-07-04 17:00 |  |  |  |  |  |  |  | 8h |  |
| 37 | 3.1 | 客户端接口 | manual | 0.5d | 2016-07-04 08:00 | 2016-07-04 12:00 |  |  |  |  |  |  | 林智涛 | 4h |  |
| 38 | 3.2 | 客户端事件推送 | manual | 0.5d | 2016-07-04 08:00 | 2016-07-04 12:00 |  |  |  |  |  |  | 林智涛 | 4h |  |
| 39 | 4 | **系统集成** |  | 1d | 2016-07-05 08:00 | 2016-07-05 17:00 |  |  |  |  |  |  |  | 8h |  |
| 40 | 4.1 | 系统集成 |  | 1d | 2016-07-05 08:00 | 2016-07-05 17:00 |  |  |  | 3d |  | start no earlier than 2016-07-05 08:00 | 林智涛 | 8h |  |
| 41 | 5 | **系统测试** |  | 10d | 2016-06-27 08:00 | 2016-07-08 17:00 |  |  |  | 0d |  |  |  | 80h |  |
| 42 | 5.1 | 设计测试用例 | manual | 3d | 2016-06-27 08:00 | 2016-06-29 17:00 |  |  |  |  |  |  | 赖丽华 | 24h |  |
| 43 | 5.2 | 搭建测试环境 | manual | 2d | 2016-06-30 08:00 | 2016-07-01 17:00 |  |  |  |  |  |  | 赖丽华 | 16h |  |
| 44 | 5.3 | 功能测试 | manual | 3d | 2016-07-04 08:00 | 2016-07-06 17:00 |  |  |  |  |  |  | 赖丽华 | 24h |  |
| 45 | 5.4 | 回归测试 | manual | 2d | 2016-07-07 08:00 | 2016-07-08 17:00 |  |  |  |  |  |  | 赖丽华 | 16h |  |
